How a schedule from MS Project changed from version to version. A marks actual dates.

## Version 1 (data date 2021-05-03, saved 2021-03-16, file Задание1.mpp)

Note of the change: Add lab04

| ID | WBS | Task | Duration | Start | Finish | Predecessors | Total float | Constraint |
| --- | --- | --- | --- | --- | --- | --- | --- | --- |
| 1 |  | Начало проекта | 0w | 2021-03-01 08:00 | 2021-03-01 08:00 |  | 46d |  |
| 2 | 2 | **Создание интерфейса** | 79.07d | 2021-03-01 08:00 | 2021-06-24 08:31 | 1 | 0.06d |  |
| 3 | 2.1 | **Разработка дизайна интерфейса** | 25.62d | 2021-03-01 08:00 | 2021-04-06 14:00 |  | 46d |  |
| 4 |  | Разработка 2D графических элементов | 3w | 2021-03-01 08:00 | 2021-03-23 11:00 |  | 46d |  |
| 5 |  | Разработка 3D графических элементов | 2w | 2021-03-01 08:00 | 2021-03-16 10:00 | 4SS | 46d |  |
| 6 |  | Создание заставки | 3w | 2021-03-16 10:00 | 2021-04-06 14:00 | 5 | 46d |  |
| 7 |  | Программирование интерфейса | 1.5w | 2021-06-11 13:31 | 2021-06-24 08:31 | 3, 12 | 0.06d |  |
| 8 | 3 | **Построение базы объектов** | 85.25d | 2021-03-23 11:00 | 2021-07-23 14:00 |  | 4.37d |  |
| 9 |  | Анализ и построение структуры базы объектов | 2w | 2021-03-23 11:00 | 2021-04-06 14:00 |  | 4.37d |  |
| 10 |  | Программирование средств обработки базы объектов | 3w | 2021-04-06 14:00 | 2021-04-27 14:00 | 9 | 4.37d |  |
| 11 |  | Наполнение базы объектов | 12w | 2021-04-27 14:00 | 2021-07-23 14:00 | 10 | 4.37d |  |
| 12 | 4 | **Создание ядра GIS** | 71.57d | 2021-03-01 08:00 | 2021-06-11 13:31 |  | 0.06d |  |
| 13 |  | Анализ и проектирование ядра | 3w | 2021-03-01 08:00 | 2021-03-23 11:00 |  | 0.06d |  |
| 14 |  | Создание модели ядра | 2.03w | 2021-03-23 11:00 | 2021-04-06 13:02 | 13 | 0.06d |  |
| 15 |  | Тестирование модели ядра | 1w | 2021-04-06 13:02 | 2021-04-13 13:02 | 14 | 0.06d |  |
| 16 |  | Создание рабочей версии ядра | 8.21w | 2021-04-13 13:02 | 2021-06-11 13:31 | 15 | 0.06d |  |
| 17 |  | Создание мультимедиа – наполнения | 6w | 2021-04-06 14:00 | 2021-05-21 12:00 | 3 | 48.49d |  |
| 18 |  | Создание справочной системы | 2w | 2021-07-06 14:00 | 2021-07-23 10:00 | 7 | 4.74d |  |
| 19 | 7 | **Создание руководства пользователя** | 18.5d | 2021-06-09 09:00 | 2021-07-06 14:00 | 7FS-10d | 0d |  |
| 20 |  | Разработка дизайна руководства | 1w | 2021-06-09 09:00 | 2021-06-17 14:00 |  | 0d |  |
| 21 |  | Написание руководства пользователя | 3w | 2021-06-11 09:00 | 2021-07-06 14:00 | 20SS+2d | 0d |  |
| 22 | 8 | **Создание web – сайта и поддержка** | 25.38d | 2021-06-11 09:00 | 2021-07-19 13:02 |  | 0d |  |
| 23 |  | Разработка структуры сайта | 1d | 2021-06-11 09:00 | 2021-06-15 09:00 | 21SS | 0d |  |
| 24 |  | Разработка дизайна сайта | 1.5w | 2021-06-15 09:00 | 2021-06-25 09:00 | 23 | 0d |  |
| 25 |  | Наполнение сайта | 3w | 2021-06-25 09:00 | 2021-07-19 13:02 | 24 | 0d |  |
| 26 |  | Тестирование сайта | 2.7w | 2021-07-12 13:02 | 2021-07-29 16:56 | 22FS-1w | 0d |  |
| 27 |  | Сдача сайта в эксплуатацию | 0w | 2021-07-29 16:56 | 2021-07-29 16:56 | 26 | 0d |  |
| 28 | 11 | **Совещание** | 101.12d | 2021-03-03 08:00 | 2021-07-28 09:00 |  | 1.87d |  |
| 29 |  | Совещание 1 | 1h | 2021-03-03 08:00 | 2021-03-03 09:00 |  | 102.87d | start no earlier than 2021-03-03 08:00 |
| 30 |  | Совещание 2 | 1h | 2021-03-10 08:00 | 2021-03-10 09:00 |  | 98.87d | start no earlier than 2021-03-10 08:00 |
| 31 |  | Совещание 3 | 1h | 2021-03-17 08:00 | 2021-03-17 09:00 |  | 93.87d | start no earlier than 2021-03-17 08:00 |
| 32 |  | Совещание 4 | 1h | 2021-03-24 08:00 | 2021-03-24 09:00 |  | 88.87d | start no earlier than 2021-03-24 08:00 |
| 33 |  | Совещание 5 | 1h | 2021-03-31 08:00 | 2021-03-31 09:00 |  | 83.87d | start no earlier than 2021-03-31 08:00 |
| 34 |  | Совещание 6 | 1h | 2021-04-07 08:00 | 2021-04-07 09:00 |  | 78.87d | start no earlier than 2021-04-07 08:00 |
| 35 |  | Совещание 7 | 1h | 2021-04-14 08:00 | 2021-04-14 09:00 |  | 73.87d | start no earlier than 2021-04-14 08:00 |
| 36 |  | Совещание 8 | 1h | 2021-04-21 08:00 | 2021-04-21 09:00 |  | 68.87d | start no earlier than 2021-04-21 08:00 |
| 37 |  | Совещание 9 | 1h | 2021-04-28 08:00 | 2021-04-28 09:00 |  | 63.87d | start no earlier than 2021-04-28 08:00 |
| 38 |  | Совещание 10 | 1h | 2021-05-05 08:00 | 2021-05-05 09:00 |  | 59.87d | start no earlier than 2021-05-05 08:00 |
| 39 |  | Совещание 11 | 1h | 2021-05-12 08:00 | 2021-05-12 09:00 |  | 55.87d | start no earlier than 2021-05-12 08:00 |
| 40 |  | Совещание 12 | 1h | 2021-05-19 08:00 | 2021-05-19 09:00 |  | 50.87d | start no earlier than 2021-05-19 08:00 |
| 41 |  | Совещание 13 | 1h | 2021-05-26 08:00 | 2021-05-26 09:00 |  | 45.87d | start no earlier than 2021-05-26 08:00 |
| 42 |  | Совещание 14 | 1h | 2021-06-02 08:00 | 2021-06-02 09:00 |  | 40.87d | start no earlier than 2021-06-02 08:00 |
| 43 |  | Совещание 15 | 1h | 2021-06-09 08:00 | 2021-06-09 09:00 |  | 35.87d | start no earlier than 2021-06-09 08:00 |
| 44 |  | Совещание 16 | 1h | 2021-06-16 08:00 | 2021-06-16 09:00 |  | 31.87d | start no earlier than 2021-06-16 08:00 |
| 45 |  | Совещание 17 | 1h | 2021-06-23 08:00 | 2021-06-23 09:00 |  | 26.87d | start no earlier than 2021-06-23 08:00 |
| 46 |  | Совещание 18 | 1h | 2021-06-30 08:00 | 2021-06-30 09:00 |  | 21.87d | start no earlier than 2021-06-30 08:00 |
| 47 |  | Совещание 19 | 1h | 2021-07-07 08:00 | 2021-07-07 09:00 |  | 16.87d | start no earlier than 2021-07-07 08:00 |
| 48 |  | Совещание 20 | 1h | 2021-07-14 08:00 | 2021-07-14 09:00 |  | 11.87d | start no earlier than 2021-07-14 08:00 |
| 49 |  | Совещание 21 | 1h | 2021-07-21 08:00 | 2021-07-21 09:00 |  | 6.87d | start no earlier than 2021-07-21 08:00 |
| 50 |  | Совещание 22 | 1h | 2021-07-28 08:00 | 2021-07-28 09:00 |  | 1.87d | start no earlier than 2021-07-28 08:00 |

## Version 2 (data date 2021-05-03, saved 2021-03-20, file Задание2.mpp)

Note of the change: Add lab04

Last finish 2021-07-29 → 2021-09-14 (+47d).

Added:

| ID | Task | Duration | Start | Finish | Constraint | Resources |
| --- | --- | --- | --- | --- | --- | --- |
| 51 | **Повышение квалификации** | 10.5d | 2021-04-05 09:00 | 2021-04-19 14:00 |  |  |
| 52 | Повышение квалификации 1 | 4h | 2021-04-05 09:00 | 2021-04-05 14:00 | start no earlier than 2021-04-05 09:00 | Программист #1; Программист #2; Программист #3; Программист #4; Преподаватель; Расходные материалы |
| 53 | Повышение квалификации 2 | 4h | 2021-04-12 09:00 | 2021-04-12 14:00 | start no earlier than 2021-04-12 09:00 | Преподаватель; Программист #1; Программист #2; Программист #3; Программист #4; Расходные материалы |
| 54 | Повышение квалификации 3 | 4h | 2021-04-19 09:00 | 2021-04-19 14:00 | start no earlier than 2021-04-19 09:00 | Преподаватель; Программист #1; Программист #2; Программист #3; Программист #4; Расходные материалы |

Changed:

| ID | Task | Start | Finish | Duration | Complete | Total float | Other |
| --- | --- | --- | --- | --- | --- | --- | --- |
| 2 | **Создание интерфейса** |  | 2021-06-24 08:31 → 2021-07-02 15:24 (+8d) | 79.07d → 85.8d |  | 0.06d → 23.4d |  |
| 3 | **Разработка дизайна интерфейса** |  | 2021-04-06 14:00 → 2021-04-16 15:08 (+10d) | 25.62d → 33.77d |  | 46d → 67.69d |  |
| 4 | Разработка 2D графических элементов |  | 2021-03-23 11:00 → 2021-03-26 09:00 (+3d) | 3w → 3.45w |  | 46d → 67.69d |  |
| 5 | Разработка 3D графических элементов |  | 2021-03-16 10:00 → 2021-03-23 10:08 (+7d) | 2w → 2.3w |  | 46d → 67.69d |  |
| 6 | Создание заставки | 2021-03-16 10:00 → 2021-03-23 10:08 (+7d) | 2021-04-06 14:00 → 2021-04-16 15:08 (+10d) | 3w → 3.45w |  | 46d → 67.69d |  |
| 7 | Программирование интерфейса | 2021-06-11 13:31 → 2021-06-23 08:31 (+12d) | 2021-06-24 08:31 → 2021-07-02 15:24 (+8d) | 1.5w → 1.55w |  | 0.06d → 23.4d |  |
| 8 | **Построение базы объектов** | 2021-03-23 11:00 → 2021-03-30 09:00 A (+7d) | 2021-07-23 14:00 → 2021-09-14 08:31 (+53d) | 85.25d → 116.94d | 0% → 18% | 4.37d → 0d |  |
| 9 | Анализ и построение структуры базы объектов | 2021-03-23 11:00 → 2021-03-30 09:00 A (+7d) | 2021-04-06 14:00 → 2021-04-13 14:10 (+7d) |  |  | 4.37d → 42.42d |  |
| 10 | Программирование средств обработки базы объектов | 2021-04-06 14:00 → 2021-04-13 14:00 A (+7d) | 2021-04-27 14:00 → 2021-06-22 08:31 (+56d) | 3w → 4w | 0% → 80% | 4.37d → 0d |  |
| 11 | Наполнение базы объектов | 2021-04-27 14:00 → 2021-06-22 08:31 (+56d) | 2021-07-23 14:00 → 2021-09-14 08:31 (+53d) |  |  | 4.37d → 0d |  |
| 12 | **Создание ядра GIS** |  | 2021-06-11 13:31 → 2021-06-23 08:31 (+12d) | 71.57d → 78.07d |  | 0.06d → 23.4d |  |
| 14 | Создание модели ядра |  | 2021-04-06 13:02 → 2021-04-07 08:02 (+1d) | 2.03w → 2.13w |  | 0.06d → 23.4d |  |
| 15 | Тестирование модели ядра | 2021-04-06 13:02 → 2021-04-07 08:02 (+1d) | 2021-04-13 13:02 → 2021-04-14 13:02 (+1d) |  |  | 0.06d → 23.4d |  |
| 16 | Создание рабочей версии ядра | 2021-04-13 13:02 → 2021-04-14 13:02 (+1d) | 2021-06-11 13:31 → 2021-06-23 08:31 (+12d) | 8.21w → 9.31w |  | 0.06d → 23.4d |  |
| 17 | Создание мультимедиа – наполнения | 2021-04-06 14:00 → 2021-04-16 15:08 (+10d) | 2021-05-21 12:00 → 2021-06-07 10:00 (+17d) |  |  | 48.49d → 69.82d |  |
| 18 | Создание справочной системы | 2021-07-06 14:00 → 2021-07-16 10:53 (+10d) | 2021-07-23 10:00 → 2021-08-04 11:00 (+12d) |  |  | 4.74d → 28.69d |  |
| 19 | **Создание руководства пользователя** | 2021-06-09 09:00 → 2021-06-18 15:53 (+9d) | 2021-07-06 14:00 → 2021-07-16 10:53 (+10d) | 18.5d → 19.5d |  | 0d → 23.34d |  |
| 20 | Разработка дизайна руководства | 2021-06-09 09:00 → 2021-06-18 15:53 (+9d) | 2021-06-17 14:00 → 2021-06-28 13:53 (+11d) |  |  | 0d → 23.34d |  |
| 21 | Написание руководства пользователя | 2021-06-11 09:00 → 2021-06-22 15:53 (+11d) | 2021-07-06 14:00 → 2021-07-16 10:53 (+10d) |  |  | 0d → 23.34d |  |
| 22 | **Создание web – сайта и поддержка** | 2021-06-11 09:00 → 2021-06-22 15:53 (+11d) | 2021-07-19 13:02 → 2021-07-29 14:56 (+10d) | 25.38d → 26.88d |  | 0d → 23.34d |  |
| 23 | Разработка структуры сайта | 2021-06-11 09:00 → 2021-06-22 15:53 (+11d) | 2021-06-15 09:00 → 2021-06-24 08:53 (+9d) |  |  | 0d → 23.34d |  |
| 24 | Разработка дизайна сайта | 2021-06-15 09:00 → 2021-06-24 08:53 (+9d) | 2021-06-25 09:00 → 2021-07-06 10:53 (+11d) |  |  | 0d → 23.34d |  |
| 25 | Наполнение сайта | 2021-06-25 09:00 → 2021-07-06 10:53 (+11d) | 2021-07-19 13:02 → 2021-07-29 14:56 (+10d) |  |  | 0d → 23.34d |  |
| 26 | Тестирование сайта | 2021-07-12 13:02 → 2021-07-22 14:56 (+10d) | 2021-07-29 16:56 → 2021-08-11 14:49 (+13d) | 2.7w → 2.77w |  | 0d → 23.34d |  |
| 27 | Сдача сайта в эксплуатацию | 2021-07-29 16:56 → 2021-08-11 14:49 (+13d) | 2021-07-29 16:56 → 2021-08-11 14:49 (+13d) |  |  | 0d → 23.34d |  |
| 34 | Совещание 6 |  |  |  |  | 78.87d → 110.94d | resources 3D аниматор; Web-дизайнер; Ведущий программист; Мультимедиа-корреспондент; Системный аналитик; Художник-дизайнер; Технический писатель → 3D аниматор; Web-дизайнер; Ведущий программист; Системный аналитик; Художник-дизайнер; Технический писатель |

## Version 3 (data date 2021-05-03, saved 2021-03-23, file Задание3.mpp)

Note of the change: Add lab04

Last finish 2021-09-14 → 2021-07-30 (-46d).

Changed:

| ID | Task | Start | Finish | Duration | Complete | Total float | Other |
| --- | --- | --- | --- | --- | --- | --- | --- |
| 2 | **Создание интерфейса** |  | 2021-07-02 15:24 → 2021-06-25 15:47 (-7d) | 85.8d → 80.85d |  | 23.4d → 1.15d |  |
| 7 | Программирование интерфейса | 2021-06-23 08:31 → 2021-06-16 10:47 (-7d) | 2021-07-02 15:24 → 2021-06-25 15:47 (-7d) | 1.55w → 1.5w |  | 23.4d → 1.15d |  |
| 8 | **Построение базы объектов** |  | 2021-09-14 08:31 → 2021-07-30 09:54 (-46d) | 116.94d → 85.11d | 18% → 16% |  |  |
| 9 | Анализ и построение структуры базы объектов | 2021-03-30 09:00 A → 2021-03-30 09:00 |  |  |  | 42.42d → 11.07d | constraint none → start no earlier than 2021-03-30 09:00 |
| 10 | Программирование средств обработки базы объектов | 2021-04-13 14:00 A → 2021-04-07 09:10 A (-6d) | 2021-06-22 08:31 → 2021-05-05 09:54 (-48d) | 4w → 3.52w |  |  | resources Программист #4; Программист #3 → Программист #4; Программист #3; Программист #1; Программист #2 |
| 11 | Наполнение базы объектов | 2021-06-22 08:31 → 2021-05-05 09:54 (-48d) | 2021-09-14 08:31 → 2021-07-30 09:54 (-46d) |  |  |  |  |
| 12 | **Создание ядра GIS** |  | 2021-06-23 08:31 → 2021-06-16 10:47 (-7d) | 78.07d → 73.35d |  | 23.4d → 1.15d |  |
| 16 | Создание рабочей версии ядра |  | 2021-06-23 08:31 → 2021-06-16 10:47 (-7d) | 9.31w → 8.37w |  | 23.4d → 1.15d |  |
| 17 | Создание мультимедиа – наполнения |  | 2021-06-07 10:00 → 2021-06-02 14:08 (-5d) |  |  | 69.82d → 40.6d |  |
| 18 | Создание справочной системы | 2021-07-16 10:53 → 2021-07-07 10:47 (-9d) | 2021-08-04 11:00 → 2021-07-21 13:47 (-14d) |  |  | 28.69d → 6.64d |  |
| 19 | **Создание руководства пользователя** | 2021-06-18 15:53 → 2021-06-10 15:47 (-8d) | 2021-07-16 10:53 → 2021-07-07 10:47 (-9d) | 19.5d → 17.5d |  | 23.34d → 1.15d |  |
| 20 | Разработка дизайна руководства | 2021-06-18 15:53 → 2021-06-10 15:47 (-8d) | 2021-06-28 13:53 → 2021-06-18 16:47 (-10d) |  |  | 23.34d → 1.15d |  |
| 21 | Написание руководства пользователя | 2021-06-22 15:53 → 2021-06-15 15:47 (-7d) | 2021-07-16 10:53 → 2021-07-07 10:47 (-9d) |  |  | 23.34d → 1.15d |  |
| 22 | **Создание web – сайта и поддержка** | 2021-06-22 15:53 → 2021-06-15 15:47 (-7d) | 2021-07-29 14:56 → 2021-07-19 11:47 (-10d) | 26.88d → 23.62d |  | 23.34d → 1.15d |  |
| 23 | Разработка структуры сайта | 2021-06-22 15:53 → 2021-06-15 15:47 (-7d) | 2021-06-24 08:53 → 2021-06-16 16:47 (-8d) |  |  | 23.34d → 1.15d |  |
| 24 | Разработка дизайна сайта | 2021-06-24 08:53 → 2021-06-16 16:47 (-8d) | 2021-07-06 10:53 → 2021-06-28 08:47 (-8d) | 1.5w → 1.4w |  | 23.34d → 1.15d |  |
| 25 | Наполнение сайта | 2021-07-06 10:53 → 2021-06-28 08:47 (-8d) | 2021-07-29 14:56 → 2021-07-19 11:47 (-10d) |  |  | 23.34d → 1.15d |  |
| 26 | Тестирование сайта | 2021-07-22 14:56 → 2021-07-12 11:47 (-10d) | 2021-08-11 14:49 → 2021-07-29 08:41 (-13d) | 2.77w → 2.52w |  | 23.34d → 1.15d |  |
| 27 | Сдача сайта в эксплуатацию | 2021-08-11 14:49 → 2021-07-29 08:41 (-13d) | 2021-08-11 14:49 → 2021-07-29 08:41 (-13d) |  |  | 23.34d → 1.15d |  |
