How a schedule from MS Project changed from version to version. A marks actual dates.

## Version 1 (data date 2021-05-03, saved 2021-04-03, file Задание3.mpp)

Note of the change: Add lab05

| ID | WBS | Task | Duration | Start | Finish | Predecessors | Total float | Constraint |
| --- | --- | --- | --- | --- | --- | --- | --- | --- |
| 1 |  | Начало проекта | 0w | 2021-03-01 08:00 | 2021-03-01 08:00 |  | 45.1d |  |
| 2 | 2 | **Анализ** | 30.65d | 2021-03-01 08:00 | 2021-04-13 14:10 |  | 0d |  |
| 3 |  | Анализ и построение структуры базы объектов | 2w | 2021-03-30 09:00 | 2021-04-13 14:10 |  | 0d | start no earlier than 2021-03-30 09:00 |
| 4 |  | Анализ и проектирование ядра | 3w | 2021-03-01 08:00 | 2021-03-23 11:00 |  | 0.96d |  |
| 5 | 3 | **Разработка** | 86.1d | 2021-03-01 08:00 | 2021-07-05 08:47 |  | 16.34d |  |
| 6 |  | Разработка 2D графических элементов | 3.45w | 2021-03-01 08:00 | 2021-03-26 09:00 | 1 | 45.1d |  |
| 7 |  | Разработка 3D графических элементов | 2.3w | 2021-03-01 08:00 | 2021-03-23 10:08 | 6SS, 1 | 45.1d |  |
| 8 |  | Создание модели ядра | 2.13w | 2021-03-23 11:00 | 2021-04-07 08:02 | 4 | 0.96d |  |
| 9 |  | Разработка дизайна руководства | 1w | 2021-06-18 15:47 | 2021-06-25 16:47 | 15FS-10d | 0.96d |  |
| 10 |  | Разработка дизайна интерфейса | 18.5d | 2021-03-01 08:00 | 2021-03-26 12:00 |  | 91.24d |  |
| 11 |  | Разработка структуры сайта | 1d | 2021-06-22 15:47 | 2021-06-23 16:47 | 26SS | 0.96d |  |
| 12 |  | Разработка дизайна сайта | 1.4w | 2021-06-23 16:47 | 2021-07-05 08:47 | 11 | 0.96d |  |
| 13 | 4 | **Программирование** | 70.58d | 2021-03-23 10:08 | 2021-07-02 15:47 |  | 0.96d |  |
| 14 |  | Создание заставки | 3.45w | 2021-03-23 10:08 | 2021-04-16 15:08 | 7, 1 | 45.1d |  |
| 15 |  | Программирование интерфейса | 1.5w | 2021-06-23 10:47 | 2021-07-02 15:47 | 1, 6, 7, 8, 14, 17, 23 | 0.96d |  |
| 16 |  | Программирование средств обработки базы объектов | 3.42w | 2021-04-13 14:10 | 2021-05-12 14:54 | 3 | 0d |  |
| 17 |  | Создание рабочей версии ядра | 9.37w | 2021-04-14 13:02 | 2021-06-23 10:47 | 23 | 0.96d |  |
| 18 | 5 | **Наполнение** | 75.97d | 2021-04-16 15:08 | 2021-08-05 14:54 |  | 0d |  |
| 19 |  | Наполнение базы объектов | 12w | 2021-05-12 14:54 | 2021-08-05 14:54 | 16 | 0d |  |
| 20 |  | Создание мультимедиа – наполнения | 6w | 2021-04-16 15:08 | 2021-06-02 14:08 | 6, 7, 14 | 45.1d |  |
| 21 |  | Наполнение сайта | 3w | 2021-07-05 08:47 | 2021-07-26 13:07 | 12 | 0.96d |  |
| 22 | 6 | **Тестирование** | 82.77d | 2021-04-07 08:02 | 2021-08-04 15:12 |  | 0.96d |  |
| 23 |  | Тестирование модели ядра | 1w | 2021-04-07 08:02 | 2021-04-14 13:02 | 8 | 0.96d |  |
| 24 |  | Тестирование сайта | 2.45w | 2021-07-19 13:07 | 2021-08-04 15:12 | 11FS-1w, 12FS-1w, 21FS-1w | 0.96d |  |
| 25 |  | Создание справочной системы | 2w | 2021-07-14 10:57 | 2021-07-28 14:07 | 15 | 6.1d |  |
| 26 |  | Написание руководства пользователя | 3w | 2021-06-22 15:47 | 2021-07-14 10:57 | 9SS+2d | 0.96d |  |
| 27 |  | Сдача сайта в эксплуатацию | 0w | 2021-08-04 15:12 | 2021-08-04 15:12 | 24 | 0.96d |  |
| 28 | 10 | **Совещание** | 101.12d | 2021-03-03 08:00 | 2021-07-28 09:00 |  | 6.61d |  |
| 29 |  | Совещание 1 | 1h | 2021-03-03 08:00 | 2021-03-03 09:00 |  | 107.61d | start no earlier than 2021-03-03 08:00 |
| 30 |  | Совещание 2 | 1h | 2021-03-10 08:00 | 2021-03-10 09:00 |  | 103.61d | start no earlier than 2021-03-10 08:00 |
| 31 |  | Совещание 3 | 1h | 2021-03-17 08:00 | 2021-03-17 09:00 |  | 98.61d | start no earlier than 2021-03-17 08:00 |
| 32 |  | Совещание 4 | 1h | 2021-03-24 08:00 | 2021-03-24 09:00 |  | 93.61d | start no earlier than 2021-03-24 08:00 |
| 33 |  | Совещание 5 | 1h | 2021-03-31 08:00 | 2021-03-31 09:00 |  | 88.61d | start no earlier than 2021-03-31 08:00 |
| 34 |  | Совещание 6 | 1h | 2021-04-07 08:00 | 2021-04-07 09:00 |  | 83.61d | start no earlier than 2021-04-07 08:00 |
| 35 |  | Совещание 7 | 1h | 2021-04-14 08:00 | 2021-04-14 09:00 |  | 78.61d | start no earlier than 2021-04-14 08:00 |
| 36 |  | Совещание 8 | 1h | 2021-04-21 08:00 | 2021-04-21 09:00 |  | 73.61d | start no earlier than 2021-04-21 08:00 |
| 37 |  | Совещание 9 | 1h | 2021-04-28 08:00 | 2021-04-28 09:00 |  | 68.61d | start no earlier than 2021-04-28 08:00 |
| 38 |  | Совещание 10 | 1h | 2021-05-05 08:00 | 2021-05-05 09:00 |  | 64.61d | start no earlier than 2021-05-05 08:00 |
| 39 |  | Совещание 11 | 1h | 2021-05-12 08:00 | 2021-05-12 09:00 |  | 60.61d | start no earlier than 2021-05-12 08:00 |
| 40 |  | Совещание 12 | 1h | 2021-05-19 08:00 | 2021-05-19 09:00 |  | 55.61d | start no earlier than 2021-05-19 08:00 |
| 41 |  | Совещание 13 | 1h | 2021-05-26 08:00 | 2021-05-26 09:00 |  | 50.61d | start no earlier than 2021-05-26 08:00 |
| 42 |  | Совещание 14 | 1h | 2021-06-02 08:00 | 2021-06-02 09:00 |  | 45.61d | start no earlier than 2021-06-02 08:00 |
| 43 |  | Совещание 15 | 1h | 2021-06-09 08:00 | 2021-06-09 09:00 |  | 40.61d | start no earlier than 2021-06-09 08:00 |
| 44 |  | Совещание 16 | 1h | 2021-06-16 08:00 | 2021-06-16 09:00 |  | 36.61d | start no earlier than 2021-06-16 08:00 |
| 45 |  | Совещание 17 | 1h | 2021-06-23 08:00 | 2021-06-23 09:00 |  | 31.61d | start no earlier than 2021-06-23 08:00 |
| 46 |  | Совещание 18 | 1h | 2021-06-30 08:00 | 2021-06-30 09:00 |  | 26.61d | start no earlier than 2021-06-30 08:00 |
| 47 |  | Совещание 19 | 1h | 2021-07-07 08:00 | 2021-07-07 09:00 |  | 21.61d | start no earlier than 2021-07-07 08:00 |
| 48 |  | Совещание 20 | 1.17h | 2021-07-14 08:00 | 2021-07-14 09:10 |  | 16.59d | start no earlier than 2021-07-14 08:00 |
| 49 |  | Совещание 21 | 1.17h | 2021-07-21 08:00 | 2021-07-21 09:10 |  | 11.59d | start no earlier than 2021-07-21 08:00 |
| 50 |  | Совещание 22 | 1h | 2021-07-28 08:00 | 2021-07-28 09:00 |  | 6.61d | start no earlier than 2021-07-28 08:00 |
| 51 | 11 | **Повышение квалификации** | 10.5d | 2021-04-05 09:00 | 2021-04-19 14:00 |  | 75.11d |  |
| 52 |  | Повышение квалификации 1 | 4h | 2021-04-05 09:00 | 2021-04-05 14:00 |  | 85.11d | start no earlier than 2021-04-05 09:00 |
| 53 |  | Повышение квалификации 2 | 4h | 2021-04-12 09:00 | 2021-04-12 14:00 |  | 80.11d | start no earlier than 2021-04-12 09:00 |
| 54 |  | Повышение квалификации 3 | 4h | 2021-04-19 09:00 | 2021-04-19 14:00 |  | 75.11d | start no earlier than 2021-04-19 09:00 |

## Version 2 (data date 2021-05-03, saved 2021-04-03, file Задание2.mpp)

Note of the change: Merge pull request #5 from wcdbmv/lab05

Last finish 2021-08-05 → 2021-07-30 (-6d). Complete tasks 0 → 8.

Added:

| ID | Task | Duration | Start | Finish | Predecessors | Resources |
| --- | --- | --- | --- | --- | --- | --- |
| 2 | **Создание интерфейса** | 80.85d | 2021-03-01 08:00 A | 2021-06-25 15:47 | 1 |  |
| 8 | **Построение базы объектов** | 85.11d | 2021-03-30 09:00 A | 2021-07-30 09:54 |  | Аренда сервера [1 /hour] |
| 12 | **Создание ядра GIS** | 73.35d | 2021-03-01 08:00 A | 2021-06-16 10:47 |  |  |
| 19 | **Создание руководства пользователя** | 17.5d | 2021-06-10 15:47 | 2021-07-07 10:47 | 7FS-10d |  |
| 22 | **Создание web – сайта и поддержка** | 23.65d | 2021-06-15 15:47 | 2021-07-19 11:57 |  |  |

Removed: 2 Анализ; 5 Разработка; 13 Программирование; 18 Наполнение; 22 Тестирование

Changed:

| ID | Task | Start | Finish | Duration | Complete | Total float | Predecessors | Other |
| --- | --- | --- | --- | --- | --- | --- | --- | --- |
| 1 | Начало проекта | 2021-03-01 08:00 A | 2021-03-01 08:00 A |  | 0% → 100% | 45.1d → none |  |  |
| 3 | **Разработка дизайна интерфейса** | 2021-03-01 08:00 A | 2021-03-26 12:00 → 2021-04-16 15:08 A (+21d) | 18.5d → 33.77d | 0% → 100% | 91.24d → none |  |  |
| 4 | Разработка 2D графических элементов | 2021-03-01 08:00 A | 2021-03-26 09:00 A |  | 0% → 100% | 45.1d → none | 1 → none |  |
| 5 | Разработка 3D графических элементов | 2021-03-01 08:00 A | 2021-03-23 10:08 A |  | 0% → 100% | 45.1d → none | 4SS, 1 → 4SS |  |
| 6 | Создание заставки | 2021-03-23 10:08 A | 2021-04-16 15:08 A |  | 0% → 100% | 45.1d → none | 5, 1 → 5 |  |
| 7 | Программирование интерфейса | 2021-06-23 10:47 → 2021-06-16 10:47 (-7d) | 2021-07-02 15:47 → 2021-06-25 15:47 (-7d) |  |  | 0.96d → 1.48d | 1, 4, 5, 14, 6, 16, 15 → 3, 12 |  |
| 9 | Анализ и построение структуры базы объектов | 2021-03-30 09:00 A | 2021-04-13 14:10 A |  | 0% → 100% | 0d → none |  |  |
| 10 | Программирование средств обработки базы объектов | 2021-04-13 14:10 → 2021-04-07 09:10 A (-6d) | 2021-05-12 14:54 → 2021-05-05 09:54 (-7d) | 3.42w → 3.52w | 0% → 80% |  |  |  |
| 11 | Наполнение базы объектов | 2021-05-12 14:54 → 2021-05-05 09:54 (-7d) | 2021-08-05 14:54 → 2021-07-30 09:54 (-6d) |  |  |  |  |  |
| 13 | Анализ и проектирование ядра | 2021-03-01 08:00 A | 2021-03-23 11:00 A |  | 0% → 100% | 0.96d → none |  |  |
| 14 | Создание модели ядра | 2021-03-23 11:00 A | 2021-04-07 08:02 A |  | 0% → 100% | 0.96d → none |  |  |
| 15 | Тестирование модели ядра | 2021-04-07 08:02 A | 2021-04-14 13:02 A |  | 0% → 100% | 0.96d → none |  |  |
| 16 | Создание рабочей версии ядра | 2021-04-14 13:02 A | 2021-06-23 10:47 → 2021-06-16 10:47 (-7d) | 9.37w → 8.37w | 0% → 30% | 0.96d → 1.48d |  |  |
| 17 | Создание мультимедиа – наполнения | 2021-04-16 15:08 A |  |  | 0% → 33% | 45.1d → 40.6d | 4, 5, 6 → 3 |  |
| 18 | Создание справочной системы | 2021-07-14 10:57 → 2021-07-07 10:47 (-7d) | 2021-07-28 14:07 → 2021-07-21 13:57 (-7d) |  |  | 6.1d → 6.62d |  |  |
| 20 | Разработка дизайна руководства | 2021-06-18 15:47 → 2021-06-10 15:47 (-8d) | 2021-06-25 16:47 → 2021-06-18 16:47 (-7d) |  |  | 0.96d → 1.48d | 7FS-10d → none |  |
| 21 | Написание руководства пользователя | 2021-06-22 15:47 → 2021-06-15 15:47 (-7d) | 2021-07-14 10:57 → 2021-07-07 10:47 (-7d) |  |  | 0.96d → 1.48d |  |  |
| 23 | Разработка структуры сайта | 2021-06-22 15:47 → 2021-06-15 15:47 (-7d) | 2021-06-23 16:47 → 2021-06-16 16:47 (-7d) |  |  | 0.96d → 1.48d |  |  |
| 24 | Разработка дизайна сайта | 2021-06-23 16:47 → 2021-06-16 16:47 (-7d) | 2021-07-05 08:47 → 2021-06-28 08:47 (-7d) |  |  | 0.96d → 1.48d |  |  |
| 25 | Наполнение сайта | 2021-07-05 08:47 → 2021-06-28 08:47 (-7d) | 2021-07-26 13:07 → 2021-07-19 11:57 (-7d) |  |  | 0.96d → 1.48d |  |  |
| 26 | Тестирование сайта | 2021-07-19 13:07 → 2021-07-12 11:57 (-7d) | 2021-08-04 15:12 → 2021-07-28 15:02 (-7d) |  |  | 0.96d → 1.48d | 23FS-1w, 24FS-1w, 25FS-1w → 22FS-1w |  |
| 27 | Сдача сайта в эксплуатацию | 2021-08-04 15:12 → 2021-07-28 15:02 (-7d) | 2021-08-04 15:12 → 2021-07-28 15:02 (-7d) |  |  | 0.96d → 1.48d |  |  |
| 49 | Совещание 21 |  | 2021-07-21 09:10 → 2021-07-21 09:00 | 1.17h → 1h |  | 11.59d → 7.11d |  | resources 3D аниматор; Web-дизайнер; Мультимедиа-корреспондент; Системный аналитик; Художник-дизайнер; Технический писатель → 3D аниматор; Web-дизайнер; Ведущий программист; Мультимедиа-корреспондент; Системный аналитик; Художник-дизайнер; Технический писатель |
