How a schedule from MS Project changed from version to version. A marks actual dates.

## Version 1 (saved 2021-03-30, file Задание2.mpp)

Note of the change: Merge pull request #6 from wcdbmv/rk1

| ID | Task | Duration | Start | Finish | Total float |
| --- | --- | --- | --- | --- | --- |
| 1 | Начало проекта | 0d | 2021-04-05 | 2021-04-05 | 20d |
| 2 | Установка ПО | 15d | 2021-04-05 | 2021-04-23 | 5d |
| 3 | Обучение персонала | 20d | 2021-04-05 | 2021-04-30 | 0d |
| 4 | Разработка представительских сайтов | 1d | 2021-04-05 | 2021-04-05 | 19d |
| 5 | Разработка сайта 1 | 5d | 2021-04-05 | 2021-04-09 | 15d |
| 6 | Разработка сайта 2 | 5d | 2021-04-05 | 2021-04-09 | 15d |
| 7 | Представительские сайты созданы | 0d | 2021-04-05 | 2021-04-05 | 20d |
| 8 | Разработка корпоративного сайта | 1d | 2021-04-05 | 2021-04-05 | 19d |
| 9 | Проектирование сайта | 5d | 2021-04-05 | 2021-04-09 | 15d |
| 10 | Программирование сайта | 15d | 2021-04-05 | 2021-04-23 | 5d |
| 11 | Наполнение сайта | 3d | 2021-04-05 | 2021-04-07 | 17d |
| 12 | Тестирование сайта | 5d | 2021-04-05 | 2021-04-09 | 15d |
| 13 | Сдача сайта заказчику | 0d | 2021-04-05 | 2021-04-05 | 20d |

## Version 2 (saved 2021-03-30, file Задание3.mpp)

Note of the change: Merge pull request #6 from wcdbmv/rk1

Last finish stays 2021-04-30.

Changed:

| ID | Task | Finish | Duration | Total float |
| --- | --- | --- | --- | --- |
| 4 | **Разработка представительских сайтов** | 2021-04-05 → 2021-04-09 (+4d) | 1d → 5d | 19d → 15d |
| 8 | **Разработка корпоративного сайта** | 2021-04-05 → 2021-04-23 (+18d) | 1d → 15d | 19d → 5d |

## Version 3 (saved 2021-03-30, file Задание4.mpp)

Note of the change: Add rk1

Last finish 2021-04-30 → 2021-06-24 (+55d).

Changed:

| ID | Task | Start | Finish | Duration | Total float | Predecessors |
| --- | --- | --- | --- | --- | --- | --- |
| 2 | Установка ПО | 2021-04-05 → 2021-04-06 (+1d) | 2021-04-23 → 2021-04-26 (+3d) |  | 5d → 0d | none → 1FS+1d |
| 3 | Обучение персонала | 2021-04-05 → 2021-04-20 (+15d) | 2021-04-30 → 2021-05-19 (+19d) |  |  | none → 2SS+10d |
| 4 | **Разработка представительских сайтов** | 2021-04-05 → 2021-05-20 (+45d) | 2021-04-09 → 2021-05-31 (+52d) | 5d → 8d | 15d → 17d | none → 3 |
| 5 | Разработка сайта 1 | 2021-04-05 → 2021-05-20 (+45d) | 2021-04-09 → 2021-05-26 (+47d) |  | 15d → 17d |  |
| 6 | Разработка сайта 2 | 2021-04-05 → 2021-05-25 (+50d) | 2021-04-09 → 2021-05-31 (+52d) |  | 15d → 17d | none → 5FS-2d |
| 7 | Представительские сайты созданы | 2021-04-05 → 2021-05-31 (+56d) | 2021-04-05 → 2021-05-31 (+56d) |  | 20d → 17d | none → 4 |
| 8 | **Разработка корпоративного сайта** | 2021-04-05 → 2021-05-20 (+45d) | 2021-04-23 → 2021-06-24 (+62d) | 15d → 25d | 5d → 0d | none → 3 |
| 9 | Проектирование сайта | 2021-04-05 → 2021-05-20 (+45d) | 2021-04-09 → 2021-05-26 (+47d) |  | 15d → 0d |  |
| 10 | Программирование сайта | 2021-04-05 → 2021-05-27 (+52d) | 2021-04-23 → 2021-06-17 (+55d) |  | 5d → 0d | none → 9 |
| 11 | Наполнение сайта | 2021-04-05 → 2021-06-15 (+71d) | 2021-04-07 → 2021-06-17 (+71d) |  | 17d → 0d | none → 10FS-3d |
| 12 | Тестирование сайта | 2021-04-05 → 2021-06-18 (+74d) | 2021-04-09 → 2021-06-24 (+76d) |  | 15d → 0d | none → 11 |
| 13 | Сдача сайта заказчику | 2021-04-05 → 2021-06-24 (+80d) | 2021-04-05 → 2021-06-24 (+80d) |  | 20d → 0d | none → 12 |

## Version 4 (saved 2021-03-30, file Задание6.mpp)

Note of the change: Add rk1

Last finish stays 2021-06-24.

Changed:

| ID | Task | Total float | Other |
| --- | --- | --- | --- |
| 2 | Установка ПО |  | resources none → Программное обесечение; Соколов |
| 3 | Обучение персонала |  | resources none → Бумага [0.02 пач.]; Картриджи для принтера; Кузнецов; Петров; Преподаватели [400%]; Соломин; Тимофеев; Яковлева |
| 5 | Разработка сайта 1 |  | resources none → Кузнецов; Тимофеев |
| 6 | Разработка сайта 2 | 17d → 14.5d | resources none → Кузнецов; Тимофеев |
| 9 | Проектирование сайта |  | resources none → Соколов; Петров |
| 10 | Программирование сайта |  | resources none → Соломин; Яковлева |
| 11 | Наполнение сайта |  | resources none → Фомина |
| 12 | Тестирование сайта |  | resources none → Соломин; Яковлева |

## Version 5 (saved 2021-03-30, file Задание7.mpp)

Note of the change: Add rk1

Last finish stays 2021-06-24.

Added:

| ID | Task | Duration | Start | Finish | Predecessors | Resources |
| --- | --- | --- | --- | --- | --- | --- |
| 6 | Разработка дизайна сайта 1 | 2d | 2021-05-20 | 2021-05-21 |  | Кузнецов |
| 7 | Программирование сайта 1 | 3d | 2021-05-24 | 2021-05-26 | 6 | Тимофеев |
| 9 | Разработка дизайна сайта 2 | 2d | 2021-05-25 | 2021-05-26 |  | Кузнецов |
| 10 | Программирование сайта 2 | 3d | 2021-05-27 | 2021-05-31 | 9 | Тимофеев |

Changed:

| ID | Task | Total float | Other |
| --- | --- | --- | --- |
| 5 | **Разработка сайта 1** |  | resources Кузнецов; Тимофеев → none |
| 8 | **Разработка сайта 2** | 14.5d → 17d | resources Кузнецов; Тимофеев → none |

## Version 6 (saved 2021-03-30, file Задание8-1.mpp)

Note of the change: Merge pull request #6 from wcdbmv/rk1

Last finish 2021-06-24 → 2021-06-22 (-2d).

Changed:

| ID | Task | Start | Finish | Duration | Total float | Other |
| --- | --- | --- | --- | --- | --- | --- |
| 3 | Обучение персонала |  | 2021-05-19 → 2021-05-17 (-2d) | 20d → 17.14d |  | resources Бумага [0.02 пач.]; Картриджи для принтера; Кузнецов; Петров; Преподаватели [400%]; Соломин; Тимофеев; Яковлева → Бумага [0.02 пач.]; Картриджи для принтера; Кузнецов; Петров; Преподаватели [400%]; Соломин; Тимофеев; Яковлева; Соколов |
| 4 | **Разработка представительских сайтов** | 2021-05-20 → 2021-05-17 (-3d) | 2021-05-31 → 2021-05-27 (-4d) |  |  |  |
| 5 | **Разработка сайта 1** | 2021-05-20 → 2021-05-17 (-3d) | 2021-05-26 → 2021-05-24 (-2d) |  |  |  |
| 6 | Разработка дизайна сайта 1 | 2021-05-20 → 2021-05-17 (-3d) | 2021-05-21 → 2021-05-19 (-2d) |  |  |  |
| 7 | Программирование сайта 1 | 2021-05-24 → 2021-05-19 (-5d) | 2021-05-26 → 2021-05-24 (-2d) |  |  |  |
| 8 | **Разработка сайта 2** | 2021-05-25 → 2021-05-20 (-5d) | 2021-05-31 → 2021-05-27 (-4d) |  |  |  |
| 9 | Разработка дизайна сайта 2 | 2021-05-25 → 2021-05-20 (-5d) | 2021-05-26 → 2021-05-24 (-2d) |  | 14.5d → 17d |  |
| 10 | Программирование сайта 2 | 2021-05-27 → 2021-05-24 (-3d) | 2021-05-31 → 2021-05-27 (-4d) |  |  |  |
| 11 | Представительские сайты созданы | 2021-05-31 → 2021-05-27 (-4d) | 2021-05-31 → 2021-05-27 (-4d) |  | 14.5d → 17d |  |
| 12 | **Разработка корпоративного сайта** | 2021-05-20 → 2021-05-17 (-3d) | 2021-06-24 → 2021-06-22 (-2d) |  |  |  |
| 13 | Проектирование сайта | 2021-05-20 → 2021-05-17 (-3d) | 2021-05-26 → 2021-05-24 (-2d) |  |  |  |
| 14 | Программирование сайта | 2021-05-27 → 2021-05-24 (-3d) | 2021-06-17 → 2021-06-15 (-2d) |  |  |  |
| 15 | Наполнение сайта | 2021-06-15 → 2021-06-09 (-6d) | 2021-06-17 → 2021-06-15 (-2d) |  |  |  |
| 16 | Тестирование сайта | 2021-06-18 → 2021-06-15 (-3d) | 2021-06-24 → 2021-06-22 (-2d) |  |  |  |
| 17 | Сдача сайта заказчику | 2021-06-24 → 2021-06-22 (-2d) | 2021-06-24 → 2021-06-22 (-2d) |  |  |  |

## Version 7 (saved 2021-03-30, file Задание8-23.mpp)

Note of the change: Add rk1

Last finish 2021-06-22 → 2021-06-29 (+7d).

Changed:

| ID | Task | Start | Finish | Duration | Other |
| --- | --- | --- | --- | --- | --- |
| 3 | Обучение персонала |  | 2021-05-17 → 2021-05-24 (+7d) | 17.14d → 22.14d | resources Бумага [0.02 пач.]; Картриджи для принтера; Кузнецов; Петров; Преподаватели [400%]; Соломин; Тимофеев; Яковлева; Соколов → Бумага [0.02 пач.]; Картриджи для принтера; Кузнецов; Петров; Преподаватели [300%]; Соломин; Тимофеев; Яковлева; Соколов |
| 4 | **Разработка представительских сайтов** | 2021-05-17 → 2021-05-24 (+7d) | 2021-05-27 → 2021-06-03 (+7d) |  |  |
| 5 | **Разработка сайта 1** | 2021-05-17 → 2021-05-24 (+7d) | 2021-05-24 → 2021-05-31 (+7d) |  |  |
| 6 | Разработка дизайна сайта 1 | 2021-05-17 → 2021-05-24 (+7d) | 2021-05-19 → 2021-05-26 (+7d) |  |  |
| 7 | Программирование сайта 1 | 2021-05-19 → 2021-05-26 (+7d) | 2021-05-24 → 2021-05-31 (+7d) |  |  |
| 8 | **Разработка сайта 2** | 2021-05-20 → 2021-05-27 (+7d) | 2021-05-27 → 2021-06-03 (+7d) |  |  |
| 9 | Разработка дизайна сайта 2 | 2021-05-20 → 2021-05-27 (+7d) | 2021-05-24 → 2021-05-31 (+7d) |  |  |
| 10 | Программирование сайта 2 | 2021-05-24 → 2021-05-31 (+7d) | 2021-05-27 → 2021-06-03 (+7d) |  |  |
| 11 | Представительские сайты созданы | 2021-05-27 → 2021-06-03 (+7d) | 2021-05-27 → 2021-06-03 (+7d) |  |  |
| 12 | **Разработка корпоративного сайта** | 2021-05-17 → 2021-05-24 (+7d) | 2021-06-22 → 2021-06-29 (+7d) |  |  |
| 13 | Проектирование сайта | 2021-05-17 → 2021-05-24 (+7d) | 2021-05-24 → 2021-05-31 (+7d) |  |  |
| 14 | Программирование сайта | 2021-05-24 → 2021-05-31 (+7d) | 2021-06-15 → 2021-06-22 (+7d) |  |  |
| 15 | Наполнение сайта | 2021-06-09 → 2021-06-17 (+8d) | 2021-06-15 → 2021-06-22 (+7d) |  |  |
| 16 | Тестирование сайта | 2021-06-15 → 2021-06-22 (+7d) | 2021-06-22 → 2021-06-29 (+7d) |  |  |
| 17 | Сдача сайта заказчику | 2021-06-22 → 2021-06-29 (+7d) | 2021-06-22 → 2021-06-29 (+7d) |  |  |

## Version 8 (saved 2021-03-30, file Задание8-45.mpp)

Note of the change: Add rk1

Last finish 2021-06-29 → 2021-07-14 (+15d).

Changed:

| ID | Task | Start | Finish | Duration |
| --- | --- | --- | --- | --- |
| 2 | Установка ПО |  | 2021-04-26 → 2021-05-12 (+16d) | 15d → 25d |
| 3 | Обучение персонала |  | 2021-05-24 → 2021-06-08 (+15d) | 22.14d → 33.57d |
| 4 | **Разработка представительских сайтов** | 2021-05-24 → 2021-06-08 (+15d) | 2021-06-03 → 2021-06-21 (+18d) |  |
| 5 | **Разработка сайта 1** | 2021-05-24 → 2021-06-08 (+15d) | 2021-05-31 → 2021-06-16 (+16d) |  |
| 6 | Разработка дизайна сайта 1 | 2021-05-24 → 2021-06-08 (+15d) | 2021-05-26 → 2021-06-10 (+15d) |  |
| 7 | Программирование сайта 1 | 2021-05-26 → 2021-06-10 (+15d) | 2021-05-31 → 2021-06-16 (+16d) |  |
| 8 | **Разработка сайта 2** | 2021-05-27 → 2021-06-11 (+15d) | 2021-06-03 → 2021-06-21 (+18d) |  |
| 9 | Разработка дизайна сайта 2 | 2021-05-27 → 2021-06-11 (+15d) | 2021-05-31 → 2021-06-16 (+16d) |  |
| 10 | Программирование сайта 2 | 2021-05-31 → 2021-06-16 (+16d) | 2021-06-03 → 2021-06-21 (+18d) |  |
| 11 | Представительские сайты созданы | 2021-06-03 → 2021-06-21 (+18d) | 2021-06-03 → 2021-06-21 (+18d) |  |
| 12 | **Разработка корпоративного сайта** | 2021-05-24 → 2021-06-08 (+15d) | 2021-06-29 → 2021-07-14 (+15d) |  |
| 13 | Проектирование сайта | 2021-05-24 → 2021-06-08 (+15d) | 2021-05-31 → 2021-06-16 (+16d) |  |
| 14 | Программирование сайта | 2021-05-31 → 2021-06-16 (+16d) | 2021-06-22 → 2021-07-07 (+15d) |  |
| 15 | Наполнение сайта | 2021-06-17 → 2021-07-02 (+15d) | 2021-06-22 → 2021-07-07 (+15d) |  |
| 16 | Тестирование сайта | 2021-06-22 → 2021-07-07 (+15d) | 2021-06-29 → 2021-07-14 (+15d) |  |
| 17 | Сдача сайта заказчику | 2021-06-29 → 2021-07-14 (+15d) | 2021-06-29 → 2021-07-14 (+15d) |  |

## Version 9 (saved 2021-03-30, file Задание9.mpp)

Note of the change: Add rk1

Last finish 2021-07-14 → 2021-06-23 (-21d).

Changed:

| ID | Task | Start | Finish | Duration | Total float | Other |
| --- | --- | --- | --- | --- | --- | --- |
| 1 | Начало проекта |  |  |  |  | baseline start none → 2021-04-05; baseline finish none → 2021-04-05 |
| 2 | Установка ПО |  | 2021-05-12 → 2021-04-26 (-16d) | 25d → 15d |  | baseline start none → 2021-04-06; baseline finish none → 2021-04-26 |
| 3 | Обучение персонала |  | 2021-06-08 → 2021-05-24 (-15d) | 33.57d → 22.14d |  | baseline start none → 2021-04-20; baseline finish none → 2021-05-24 |
| 4 | **Разработка представительских сайтов** | 2021-06-08 → 2021-05-24 (-15d) | 2021-06-21 → 2021-06-18 (-3d) | 8d → 18d | 17d → 3.33d | baseline start none → 2021-05-24; baseline finish none → 2021-06-18 |
| 5 | **Разработка сайта 1** | 2021-06-08 → 2021-05-24 (-15d) | 2021-06-16 → 2021-05-31 (-16d) |  | 17d → 3.33d | baseline start none → 2021-05-24; baseline finish none → 2021-05-31 |
| 6 | Разработка дизайна сайта 1 | 2021-06-08 → 2021-05-24 (-15d) | 2021-06-10 → 2021-05-26 (-15d) |  | 17d → 3.33d | baseline start none → 2021-05-24; baseline finish none → 2021-05-26 |
| 7 | Программирование сайта 1 | 2021-06-10 → 2021-05-26 (-15d) | 2021-06-16 → 2021-05-31 (-16d) |  | 17d → 3.33d | baseline start none → 2021-05-26; baseline finish none → 2021-05-31 |
| 8 | **Разработка сайта 2** | 2021-06-11 → 2021-05-27 (-15d) | 2021-06-21 → 2021-06-18 (-3d) | 5d → 15d | 17d → 3.33d | baseline start none → 2021-05-27; baseline finish none → 2021-06-18 |
| 9 | Разработка дизайна сайта 2 | 2021-06-11 → 2021-05-27 (-15d) | 2021-06-16 → 2021-05-31 (-16d) |  | 17d → 3.33d | baseline start none → 2021-05-27; baseline finish none → 2021-05-31 |
| 10 | Программирование сайта 2 | 2021-06-16 → 2021-06-15 (-1d) | 2021-06-21 → 2021-06-18 (-3d) |  | 17d → 3.33d | baseline start none → 2021-06-15; baseline finish none → 2021-06-18 |
| 11 | Представительские сайты созданы | 2021-06-21 → 2021-06-18 (-3d) | 2021-06-21 → 2021-06-18 (-3d) |  | 17d → 3.33d | baseline start none → 2021-06-18; baseline finish none → 2021-06-18 |
| 12 | **Разработка корпоративного сайта** | 2021-06-08 → 2021-05-24 (-15d) | 2021-07-14 → 2021-06-23 (-21d) | 25d → 21.33d |  | baseline start none → 2021-05-24; baseline finish none → 2021-06-23 |
| 13 | Проектирование сайта | 2021-06-08 → 2021-05-24 (-15d) | 2021-06-16 → 2021-05-31 (-16d) |  |  | baseline start none → 2021-05-24; baseline finish none → 2021-05-31 |
| 14 | Программирование сайта | 2021-06-16 → 2021-05-31 (-16d) | 2021-07-07 → 2021-06-15 (-22d) | 15d → 10d |  | resources Соломин; Яковлева → Соломин; Яковлева; Тимофеев; baseline start none → 2021-05-31; baseline finish none → 2021-06-15 |
| 15 | Наполнение сайта | 2021-07-02 → 2021-06-09 (-23d) | 2021-07-07 → 2021-06-15 (-22d) |  |  | baseline start none → 2021-06-09; baseline finish none → 2021-06-15 |
| 16 | Тестирование сайта | 2021-07-07 → 2021-06-15 (-22d) | 2021-07-14 → 2021-06-23 (-21d) | 5d → 6.33d |  | resources Соломин; Яковлева → Соломин; Яковлева; Тимофеев; baseline start none → 2021-06-15; baseline finish none → 2021-06-23 |
| 17 | Сдача сайта заказчику | 2021-07-14 → 2021-06-23 (-21d) | 2021-07-14 → 2021-06-23 (-21d) |  |  | baseline start none → 2021-06-23; baseline finish none → 2021-06-23 |

## Version 10 (data date 2021-06-05, saved 2021-03-30, file Задание10.mpp)

Note of the change: Merge pull request #6 from wcdbmv/rk1

Last finish 2021-06-23 → 2021-06-25 (+2d). Complete tasks 0 → 7.

Changed:

| ID | Task | Start | Finish | Duration | Complete | Total float |
| --- | --- | --- | --- | --- | --- | --- |
| 1 | Начало проекта | 2021-04-05 A | 2021-04-05 A |  | 0% → 100% | 0d → none |
| 2 | Установка ПО | 2021-04-06 A | 2021-04-26 A |  | 0% → 100% | 0d → none |
| 3 | Обучение персонала | 2021-04-20 A | 2021-05-24 A |  | 0% → 100% | 0d → none |
| 4 | **Разработка представительских сайтов** | 2021-05-24 A | 2021-06-18 → 2021-06-21 (+3d) | 18d → 18.91d | 0% → 79% | 3.33d → 4.85d |
| 5 | **Разработка сайта 1** | 2021-05-24 A | 2021-05-31 A |  | 0% → 100% | 3.33d → none |
| 6 | Разработка дизайна сайта 1 | 2021-05-24 A | 2021-05-26 A |  | 0% → 100% | 3.33d → none |
| 7 | Программирование сайта 1 | 2021-05-26 A | 2021-05-31 A |  | 0% → 100% | 3.33d → none |
| 8 | **Разработка сайта 2** | 2021-05-27 A | 2021-06-18 → 2021-06-21 (+3d) | 15d → 15.91d | 0% → 58% | 3.33d → 4.85d |
| 9 | Разработка дизайна сайта 2 | 2021-05-27 A | 2021-05-31 A |  | 0% → 100% | 3.33d → none |
| 10 | Программирование сайта 2 | 2021-06-15 → 2021-05-31 A (-15d) | 2021-06-18 → 2021-06-21 (+3d) |  | 0% → 30% | 3.33d → 4.85d |
| 11 | Представительские сайты созданы | 2021-06-18 → 2021-06-21 (+3d) | 2021-06-18 → 2021-06-21 (+3d) |  |  | 3.33d → 4.85d |
| 12 | **Разработка корпоративного сайта** | 2021-05-24 A | 2021-06-23 → 2021-06-25 (+2d) | 21.33d → 23.76d | 0% → 37% |  |
| 13 | Проектирование сайта | 2021-05-24 A | 2021-05-31 A | 5d → 5.5d | 0% → 100% | 0d → none |
| 14 | Программирование сайта | 2021-05-31 A | 2021-06-15 → 2021-06-16 (+1d) | 10d → 11d | 0% → 40% |  |
| 15 | Наполнение сайта | 2021-06-09 → 2021-06-10 (+1d) | 2021-06-15 → 2021-06-16 (+1d) | 3d → 3.3d |  |  |
| 16 | Тестирование сайта | 2021-06-15 → 2021-06-16 (+1d) | 2021-06-23 → 2021-06-25 (+2d) | 6.33d → 6.96d |  |  |
| 17 | Сдача сайта заказчику | 2021-06-23 → 2021-06-25 (+2d) | 2021-06-23 → 2021-06-25 (+2d) |  |  |  |
